# FZK-Haus

Schedule from Primavera P6, 2027-03-01 to 2027-08-04, data date 2027-05-19, A marks actual dates.

## Calendars

- Mon-Fri 8h, BW holidays 2027: Mon-Fri 08:00-12:00, 13:00-17:00; Sat-Sun off. Exceptions (off unless hours are given): 2027-03-26, 2027-03-29, 2027-05-06, 2027-05-17, 2027-05-27.

## Schedule

| ID | WBS | Activity | Type | Duration | Start | Finish | Predecessors | Complete | Remaining | Planned start | Planned finish | Total float | Responsible | Level | Trade | Phase | Crew size |
| --- | --- | --- | --- | --- | --- | --- | --- | --- | --- | --- | --- | --- | --- | --- | --- | --- | --- |
|  | FZK | **FZK-Haus single-family house** |  |  | 2027-03-01 | 2027-08-04 |  |  |  |  |  |  |  |  |  |  |  |
|  | PRE | **Preconstruction** |  |  | 2027-03-01 | 2027-03-01 |  |  |  |  |  |  |  |  |  |  |  |
| A1000 |  | Building permit approved | milestone | 0d | 2027-03-01 A | 2027-03-01 A |  | 100% |  |  |  |  | Main contractor | SITE | GEN | PRE |  |
| A1010 |  | Notice to proceed | milestone | 0d | 2027-03-01 A | 2027-03-01 A | A1000 | 100% |  |  |  |  | Main contractor | SITE | GEN | PRE |  |
|  | SUB | **Substructure** |  |  | 2027-03-01 | 2027-03-25 |  |  |  |  |  |  |  |  |  |  |  |
| A1100 |  | Site set-up, hoarding and welfare |  | 3d | 2027-03-01 A | 2027-03-03 A | A1010 | 100% |  |  |  |  | Main contractor | SITE | SITE | SUB | 3 |
| A1110 |  | Survey and set-out |  | 1d | 2027-03-04 A | 2027-03-04 A | A1100 | 100% |  |  |  |  | Main contractor | SITE | SITE | SUB | 2 |
| A1120 |  | Topsoil strip and excavation |  | 4d | 2027-03-05 A | 2027-03-12 A | A1110 | 100% |  | 2027-03-05 | 2027-03-10 |  | Erdbau Neckar GmbH | SITE | EARTH | SUB | 3 |
| A1130 |  | Below-ground drainage and service ducts |  | 3d | 2027-03-15 A | 2027-03-17 A | A1120 | 100% |  | 2027-03-11 | 2027-03-15 |  | Erdbau Neckar GmbH | SITE | DRAIN | SUB | 3 |
| A1140 |  | Sub-base, blinding and perimeter insulation |  | 2d | 2027-03-18 A | 2027-03-19 A | A1130 | 100% |  | 2027-03-16 | 2027-03-17 |  | Erdbau Neckar GmbH | EG | EARTH | SUB | 3 |
| A1150 |  | Ground slab: edge forms, DPM and reinforcement |  | 3d | 2027-03-22 A | 2027-03-24 A | A1140 | 100% |  | 2027-03-18 | 2027-03-22 |  | Rohbau Kraus GmbH | EG | CONC-PREP | SUB | 4 |
| A1160 |  | Pour ground slab |  | 1d | 2027-03-25 A | 2027-03-25 A | A1150 | 100% |  | 2027-03-23 | 2027-03-23 |  | Rohbau Kraus GmbH | EG | CONC-SLAB | SUB | 6 |
|  | SHELL | **Shell** |  |  | 2027-04-02 | 2027-05-12 |  |  |  |  |  |  |  |  |  |  |  |
|  | EG | **Ground floor (Erdgeschoss)** |  |  | 2027-04-02 | 2027-04-16 |  |  |  |  |  |  |  |  |  |  |  |
| A1200 |  | External masonry walls, ground floor |  | 8d | 2027-04-02 A | 2027-04-13 A | A1160 FS+3d | 100% |  | 2027-03-31 | 2027-04-09 |  | Rohbau Kraus GmbH | EG | MASON-EXT | SHELL | 4 |
| A1210 |  | Internal masonry walls, ground floor |  | 5d | 2027-04-08 A | 2027-04-14 A | A1200 SS+4d, A1200 FF+1d | 100% |  | 2027-04-06 | 2027-04-12 |  | Rohbau Kraus GmbH | EG | MASON-INT | SHELL | 3 |
| A1220 |  | Downstand beam and lintels |  | 2d | 2027-04-15 A | 2027-04-16 A | A1200, A1210 | 100% |  | 2027-04-13 | 2027-04-14 |  | Rohbau Kraus GmbH | EG | CONC-BEAM | SHELL | 4 |
|  | DG | **Attic (Dachgeschoss)** |  |  | 2027-04-19 | 2027-05-12 |  |  |  |  |  |  |  |  |  |  |  |
| A1230 |  | First-floor slab: props, formwork and reinforcement |  | 5d | 2027-04-19 A | 2027-04-23 A | A1220 | 100% |  | 2027-04-15 | 2027-04-21 |  | Rohbau Kraus GmbH | DG | CONC-PREP | SHELL | 4 |
| A1240 |  | Pour first-floor slab |  | 1d | 2027-04-26 A | 2027-04-26 A | A1230 | 100% |  | 2027-04-22 | 2027-04-22 |  | Rohbau Kraus GmbH | DG | CONC-SLAB | SHELL | 6 |
| A1250 |  | Gable walls, attic |  | 5d | 2027-05-04 A | 2027-05-11 A | A1240 FS+5d | 100% |  | 2027-04-30 | 2027-05-07 |  | Rohbau Kraus GmbH | DG | MASON-EXT | SHELL | 4 |
| A1260 |  | Strike props, first-floor slab |  | 1d | 2027-05-12 A | 2027-05-12 A | A1240 FS+10d | 100% |  | 2027-05-10 | 2027-05-10 |  | Rohbau Kraus GmbH | EG | CONC-PREP | SHELL | 2 |
|  | ROOF | **Roof** |  |  | 2027-05-12 | 2027-06-03 |  |  |  |  |  |  |  |  |  |  |  |
| A1300 |  | Wall plates, purlins and ridge beam |  | 3d | 2027-05-12 A | 2027-05-14 A | A1250 | 100% |  | 2027-05-10 | 2027-05-12 |  | Zimmerei Holzwerk | DG | TIMBER-STRUCT | ROOF | 3 |
| A1310 |  | Rafters |  | 4d | 2027-05-18 A | 2027-05-21 | A1300 | 25% | 3d | 2027-05-13 | 2027-05-19 | 0d | Zimmerei Holzwerk | DG | TIMBER-RAFTER | ROOF | 3 |
| A1320 |  | Topping-out (Richtfest) | milestone | 0d | 2027-05-21 | 2027-05-21 | A1310 |  |  | 2027-05-19 | 2027-05-19 | 52d | Main contractor | DG | GEN | ROOF |  |
| A1330 |  | Roof boarding, membrane and counter-battens |  | 3d | 2027-05-24 | 2027-05-26 | A1310 |  |  | 2027-05-20 | 2027-05-24 | 0d | Zimmerei Holzwerk | DG | ROOF-DECK | ROOF | 3 |
| A1340 |  | Roof tiling, flashings and gutters |  | 6d | 2027-05-26 | 2027-06-03 | A1330 SS+2d, A1330 FF+1d |  |  | 2027-05-24 | 2027-06-01 | 0d | Dachdecker Ziegel & Co | DG | ROOFING | ROOF | 3 |

| ID | WBS | Activity | Type | Duration | Start | Finish | Predecessors | Planned start | Planned finish | Total float | Crew size | Responsible | Level | Trade | Phase |
| --- | --- | --- | --- | --- | --- | --- | --- | --- | --- | --- | --- | --- | --- | --- | --- |
|  | ENV | **Envelope** |  |  | 2027-05-28 | 2027-06-17 |  |  |  |  |  |  |  |  |  |
| A1400 |  | Windows, ground floor |  | 3d | 2027-05-28 | 2027-06-01 | A1220, A1330 | 2027-05-25 | 2027-05-28 | 1d | 2 | Fensterbau Lichtblick | EG | WINDOWS | ENV |
| A1410 |  | Windows, attic |  | 1d | 2027-05-28 | 2027-05-28 | A1250, A1330 | 2027-05-25 | 2027-05-25 | 4d | 2 | Fensterbau Lichtblick | DG | WINDOWS | ENV |
| A1420 |  | External doors |  | 1d | 2027-06-02 | 2027-06-02 | A1400 | 2027-05-31 | 2027-05-31 | 1d | 2 | Fensterbau Lichtblick | EG | DOORS-EXT | ENV |
| A1440 |  | External insulation and render (ETICS) |  | 10d | 2027-06-03 | 2027-06-16 | A1420, A1340 SS+3d | 2027-06-01 | 2027-06-14 | 28d | 3 | Putz & Fassade AG | ALL | FACADE | ENV |
| A1430 |  | Building weathertight | milestone | 0d | 2027-06-03 | 2027-06-03 | A1340, A1410, A1420 | 2027-06-01 | 2027-06-01 | 0d |  | Main contractor | ALL | GEN | ENV |
| A1450 |  | Strike scaffold |  | 1d | 2027-06-17 | 2027-06-17 | A1440 | 2027-06-15 | 2027-06-15 | 28d | 3 | Main contractor | ALL | SITE | ENV |
|  | MEP | **Building services** |  |  | 2027-06-04 | 2027-07-30 |  |  |  |  |  |  |  |  |  |
| A1500 |  | Electrical first fix |  | 5d | 2027-06-04 | 2027-06-10 | A1430 | 2027-06-02 | 2027-06-08 | 0d | 2 | Elektro Funke | ALL | MEP-ELEC | MEP |
| A1510 |  | Plumbing and drainage first fix |  | 4d | 2027-06-04 | 2027-06-09 | A1430 SS+1d | 2027-06-02 | 2027-06-07 | 1d | 2 | Sanitaer Quelle | ALL | MEP-PLUMB | MEP |
| A1520 |  | Underfloor heating and manifold |  | 3d | 2027-06-10 | 2027-06-14 | A1510, A1260 | 2027-06-08 | 2027-06-10 | 3d | 2 | Sanitaer Quelle | EG | MEP-HVAC | MEP |
| A1690 |  | Electrical and plumbing second fix |  | 4d | 2027-07-27 | 2027-07-30 | A1680 SS+3d | 2027-07-23 | 2027-07-28 | 0d | 2 | Elektro Funke | ALL | MEP-ELEC | MEP |
|  | FIT | **Fit-out** |  |  | 2027-06-11 | 2027-07-30 |  |  |  |  |  |  |  |  |  |
| A1640 |  | Screed drying and moisture test |  | 20d | 2027-06-22 | 2027-07-19 | A1630 | 2027-06-18 | 2027-07-15 | 0d |  | Main contractor | ALL | GEN | FIT |
| A1670 |  | Floor finishes |  | 5d | 2027-07-20 | 2027-07-26 | A1640 | 2027-07-16 | 2027-07-22 | 0d | 2 | Ausbau Maler Bunt | ALL | FINISH | FIT |
| A1680 |  | Painting and decorating |  | 6d | 2027-07-22 | 2027-07-29 | A1670 SS+2d, A1660 | 2027-07-20 | 2027-07-27 | 0d | 2 | Ausbau Maler Bunt | ALL | FINISH | FIT |
| A1695 |  | Kitchen and sanitaryware |  | 3d | 2027-07-28 | 2027-07-30 | A1670, A1690 SS+1d | 2027-07-26 | 2027-07-28 | 0d | 2 | Ausbau Maler Bunt | ALL | FINISH | FIT |
|  | EG | **Fit-out ground floor** |  |  | 2027-06-11 | 2027-07-21 |  |  |  |  |  |  |  |  |  |
| A1600 |  | Internal plaster, ground floor |  | 5d | 2027-06-11 | 2027-06-17 | A1500, A1510, A1260 | 2027-06-09 | 2027-06-15 | 0d | 3 | Ausbau Maler Bunt | EG | FINISH | FIT |
| A1620 |  | Floor screed, ground floor |  | 2d | 2027-06-18 | 2027-06-21 | A1520, A1600 | 2027-06-16 | 2027-06-17 | 0d | 3 | Estrich Glatt | EG | SCREED | FIT |
| A1650 |  | Spiral stair |  | 2d | 2027-06-25 | 2027-06-28 | A1630 FS+3d | 2027-06-23 | 2027-06-24 | 23d | 2 | Metallbau Spirale | EG | STAIRS | FIT |
| A1660 |  | Internal doors |  | 2d | 2027-07-20 | 2027-07-21 | A1640 | 2027-07-16 | 2027-07-19 | 0d | 2 | Schreinerei Eiche | EG | DOORS-INT | FIT |
|  | DG | **Fit-out attic** |  |  | 2027-06-15 | 2027-06-29 |  |  |  |  |  |  |  |  |  |
| A1610 |  | Internal plaster, attic |  | 4d | 2027-06-15 | 2027-06-18 | A1600 SS+2d | 2027-06-11 | 2027-06-16 | 0d | 3 | Ausbau Maler Bunt | DG | FINISH | FIT |
| A1630 |  | Floor screed, attic |  | 1d | 2027-06-21 | 2027-06-21 | A1610, A1620 SS+1d | 2027-06-17 | 2027-06-17 | 0d | 3 | Estrich Glatt | DG | SCREED | FIT |
| A1655 |  | Balustrades and railings, attic |  | 1d | 2027-06-29 | 2027-06-29 | A1650 | 2027-06-25 | 2027-06-25 | 23d | 2 | Metallbau Spirale | DG | RAILINGS | FIT |

| ID | WBS | Activity | Type | Duration | Start | Finish | Predecessors | Planned start | Planned finish | Total float | Crew size | Responsible | Level | Trade | Phase |
| --- | --- | --- | --- | --- | --- | --- | --- | --- | --- | --- | --- | --- | --- | --- | --- |
|  | EXT | **External works** |  |  | 2027-06-18 | 2027-06-25 |  |  |  |  |  |  |  |  |  |
| A1700 |  | Drive, paths and landscaping |  | 6d | 2027-06-18 | 2027-06-25 | A1450 | 2027-06-16 | 2027-06-23 | 28d | 3 | Garten Gruen | SITE | LANDSCAPE | EXT |
|  | HO | **Handover** |  |  | 2027-08-02 | 2027-08-04 |  |  |  |  |  |  |  |  |  |
| A1800 |  | Commissioning and snagging |  | 3d | 2027-08-02 | 2027-08-04 | A1690, A1695, A1655, A1680 | 2027-07-29 | 2027-08-02 | 0d | 2 | Main contractor | ALL | GEN | HO |
| A1810 |  | Final inspection | milestone | 0d | 2027-08-04 | 2027-08-04 | A1800, A1700 | 2027-08-02 | 2027-08-02 | 0d |  | Main contractor | ALL | GEN | HO |
| A1820 |  | Handover | milestone | 0d | 2027-08-04 | 2027-08-04 | A1810 | 2027-08-02 | 2027-08-02 | 0d |  | Main contractor | ALL | GEN | HO |

## Activity codes

| Code | Value | Meaning |
| --- | --- | --- |
| Level | ALL | Whole building |
| Level | DG | Attic (Dachgeschoss) |
| Level | EG | Ground floor (Erdgeschoss) |
| Level | SITE | Site |
| Phase | ENV | Envelope |
| Phase | EXT | External works |
| Phase | FIT | Fit-out |
| Phase | HO | Handover |
| Phase | MEP | Services |
| Phase | PRE | Preconstruction |
| Phase | ROOF | Roof |
| Phase | SHELL | Shell |
| Phase | SUB | Substructure |
| Trade | CONC-BEAM | Concrete: beams and lintels |
| Trade | CONC-PREP | Concrete: formwork and reinforcement |
| Trade | CONC-SLAB | Concrete: slabs |
| Trade | DOORS-EXT | External doors |
| Trade | DOORS-INT | Internal doors |
| Trade | DRAIN | Below-ground drainage |
| Trade | EARTH | Earthworks |
| Trade | FACADE | Facade: insulation and render |
| Trade | FINISH | Finishes |
| Trade | GEN | General / milestones |
| Trade | LANDSCAPE | External works |
| Trade | MASON-EXT | Masonry: external walls |
| Trade | MASON-INT | Masonry: internal walls |
| Trade | MEP-ELEC | Electrical |
| Trade | MEP-HVAC | Heating |
| Trade | MEP-PLUMB | Plumbing |
| Trade | RAILINGS | Railings and balustrades |
| Trade | ROOF-DECK | Roof deck |
| Trade | ROOFING | Roof tiling |
| Trade | SCREED | Screed |
| Trade | SITE | Site set-up |
| Trade | STAIRS | Stairs |
| Trade | TIMBER-RAFTER | Carpentry: rafters |
| Trade | TIMBER-STRUCT | Carpentry: purlins and ridge |
| Trade | WINDOWS | Windows |
